# Proyecto1 arreglo

Schedule from MS Project, 2016-09-12 to 2017-05-26, status date 2016-10-17, costs in €, A marks actual dates.

## Calendars

- Estándar: Mon-Fri 09:00-13:00, 15:00-19:00; Sat-Sun off.

## Resources

| Resource | Rate |
| --- | --- |
| HÉCTOR MEDINA | 9.23 |
| DAVID SEGARRA | 9.23 |
| JAUME LLORET | 9.23 |
| SAMUEL NAVARRO | 9.23 |
| PABLO TORREGROSA | 9.23 |
| IVAN PINA | 9.23 |

## Schedule

| ID | WBS | Task | Duration | Start | Finish | Predecessors | Complete | Remaining | Actual start | Total slack | Constraint | Resources | Work | Actual work | Cost | Actual cost |
| --- | --- | --- | --- | --- | --- | --- | --- | --- | --- | --- | --- | --- | --- | --- | --- | --- |
| 1 | 1 | **HITO 0** | 28d | 2016-09-12 | 2016-10-19 |  |  |  |  | 0d |  |  | 1104h |  | 10,189.92 |  |
| 2 | 1.1 | **ITERACIÓN 1** | 8d | 2016-09-12 | 2016-09-21 |  |  |  |  | 0d |  |  | 384h |  | 3,544.32 |  |
| 3 | 1.1.1 | [PM]Rellenar documento de Concepto del proyecto | 8d | 2016-09-12 | 2016-09-21 |  |  |  |  | 0d |  | DAVID SEGARRA; HÉCTOR MEDINA; IVAN PINA; JAUME LLORET; PABLO TORREGROSA; SAMUEL NAVARRO | 384h |  | 3,544.32 |  |
| 4 | 1.2 | **ITERACIÓN 2** | 10d | 2016-09-22 | 2016-10-05 | 2 |  |  |  | 0d |  |  | 480h |  | 4,430.4 |  |
| 5 | 1.2.1 | [PM]Rellenar versión inicial del documento Especificación | 10d | 2016-09-22 | 2016-10-05 |  |  |  |  | 0d |  | DAVID SEGARRA; HÉCTOR MEDINA; IVAN PINA; JAUME LLORET; PABLO TORREGROSA; SAMUEL NAVARRO | 480h |  | 4,430.4 |  |
| 6 | 1.3 | **ITERACIÓN 3** | 10d | 2016-10-06 | 2016-10-19 | 4 |  |  |  | 0d |  |  | 240h |  | 2,215.2 |  |
| 7 | 1.3.1 | [PM]Completar y revisar documento Especificación. | 5d | 2016-10-06 | 2016-10-12 |  |  |  |  | 0d |  | IVAN PINA; JAUME LLORET; PABLO TORREGROSA; SAMUEL NAVARRO | 160h |  | 1,476.8 |  |
| 8 | 1.3.2 | [PM]Elaborar el Presupuesto (hoja de cálculo) | 2d | 2016-10-13 | 2016-10-14 | 7 |  |  |  | 0d |  | DAVID SEGARRA; HÉCTOR MEDINA | 32h |  | 295.36 |  |
| 9 | 1.3.3 | [PM]Crear WBS del proyecto en Project. | 1d | 2016-10-17 | 2016-10-17 | 8 |  |  |  | 0d |  | DAVID SEGARRA; HÉCTOR MEDINA | 16h |  | 147.68 |  |
| 10 | 1.3.4 | [PM]Crear plan general (Tareas y precedencias básicas). en Project | 2d | 2016-10-18 | 2016-10-19 | 9 |  |  |  | 0d |  | DAVID SEGARRA; HÉCTOR MEDINA | 32h |  | 295.36 |  |
| 11 | 2 | **HITO 1** | 47d | 2016-10-20 A | 2016-12-23 | 1 | 58% | 19.56d |  |  |  |  | 1146.54h | 610.55h | 10,434.89 | 5,487.7 |
| 12 | 2.1 | **ITERACIÓN 1** | 10d | 2016-10-20 A | 2016-11-02 A |  | 100% |  |  |  |  |  | 69.2h | 69.2h | 638.72 | 638.72 |
| 13 | 2.1.1 | **PM** | 10d? | 2016-10-20 A | 2016-11-02 A |  | 100% |  |  |  |  |  | 69.2h | 69.2h | 638.72 | 638.72 |
| 14 | 2.1.1.1 | **[PM]Planificación** | 4.21d? | 2016-10-20 A | 2016-10-26 A |  | 100% |  |  |  |  |  | 66h | 66h | 609.18 | 609.18 |
| 15 | 2.1.1.1.1 | **[PM]Detallar plan iteraciones del mes de Noviembre** | 4.21d? | 2016-10-20 A | 2016-10-26 A |  | 100% |  |  |  |  |  | 66h | 66h | 609.18 | 609.18 |
| 16 | 2.1.1.1.1.1 | Creación subtareas y precedencias en Project. | 16.33h? | 2016-10-20 A | 2016-10-24 A |  | 100% |  |  |  | start no earlier than 2016-10-20 | DAVID SEGARRA [98%]; HÉCTOR MEDINA [98%] | 32h | 32h | 295.36 | 295.36 |
| 17 | 2.1.1.1.1.2 | Asignar recursos a las tareas en Project. | 17.35h? | 2016-10-24 A | 2016-10-26 A | 16 | 100% |  |  |  |  | DAVID SEGARRA [98%]; HÉCTOR MEDINA [98%] | 34h | 34h | 313.82 | 313.82 |
| 18 | 2.1.1.2 | **[PM]Seguimiento** | 10d? | 2016-10-20 A | 2016-11-02 A |  | 100% |  |  |  |  |  | 3.2h | 3.2h | 29.54 | 29.54 |
| 19 | 2.1.1.2.1 | [PM]Regitrar de tiempos y % de realización de tareas en Project. | 80h? | 2016-10-20 A | 2016-11-02 A |  | 100% |  |  |  | finish no earlier than 2016-11-02 | DAVID SEGARRA [2%]; HÉCTOR MEDINA [2%] | 3.2h | 3.2h | 29.54 | 29.54 |
| 20 | 2.2 | **ITERACIÓN 2** | 10d | 2016-11-03 | 2016-11-16 | 12 | 86% | 1.44d | 2016-11-02 |  |  |  | 433.98h | 327.55h | 3,931.73 | 2,949.45 |
| 21 | 2.2.1 | **PM** | 10d? | 2016-11-03 A | 2016-11-16 A |  | 100% |  |  |  |  |  | 35.34h | 35.34h | 326.19 | 326.19 |
| 22 | 2.2.1.1 | **[PM]Rellenar documento gestión de riesgos.** | 1.84d? | 2016-11-03 A | 2016-11-04 A |  | 100% |  |  |  |  |  | 18.44h | 18.44h | 170.2 | 170.2 |
| 23 | 2.2.1.1.1 | Leer documento | 1.07h | 2016-11-03 A | 2016-11-03 A |  | 100% |  |  |  | start no earlier than 2016-11-03 | HÉCTOR MEDINA [93%]; DAVID SEGARRA [93%] | 2h | 2h | 18.46 | 18.46 |
| 24 | 2.2.1.1.2 | Rellenar documento | 4h | 2016-11-03 A | 2016-11-03 A | 23 | 100% |  |  |  |  | HÉCTOR MEDINA [93%]; DAVID SEGARRA [93%] | 7.44h | 7.44h | 68.67 | 68.67 |
| 25 | 2.2.1.1.3 | Analizar documento | 3.23h? | 2016-11-03 A | 2016-11-04 A | 24 | 100% |  |  |  |  | HÉCTOR MEDINA [93%] | 3h | 3h | 27.69 | 27.69 |
| 26 | 2.2.1.1.4 | Actulizar documento | 6.45h? | 2016-11-04 A | 2016-11-04 A | 25 | 100% |  |  |  |  | DAVID SEGARRA [93%] | 6h | 6h | 55.38 | 55.38 |

Notes:
- 11: 757.4 h
- 12: 44.64 h
- 14: 23.04 h
- 15: 23.04 h
- 16: 16.02 h
- 17: 17.02 h
- 18: 21.6 h
- 19: 21.6 h
- 20: 127.24 h
- 22: 21.6 h
- 25: 2.55 H
- 26: 2.55 H

| ID | WBS | Task | Duration | Start | Finish | Predecessors | Complete | Remaining | Total slack | Free slack | Constraint | Resources | Work | Actual work | Cost | Actual cost |
| --- | --- | --- | --- | --- | --- | --- | --- | --- | --- | --- | --- | --- | --- | --- | --- | --- |
| 27 | 2.2.1.2 | **[PM]Planificación** | 9.12d? | 2016-11-03 A | 2016-11-16 A |  | 100% |  |  |  |  |  | 7.3h | 7.3h | 67.38 | 67.38 |
| 28 | 2.2.1.2.1 | **[PM]Detallar plan iteraciones del mes de Noviembre** | 9.12d? | 2016-11-03 A | 2016-11-16 A |  | 100% |  |  |  |  |  | 7.3h | 7.3h | 67.38 | 67.38 |
| 29 | 2.2.1.2.1.1 | Creación subtareas y precedencias en Project. | 56h? | 2016-11-03 A | 2016-11-11 A |  | 100% |  |  |  | finish no earlier than 2016-11-11 | DAVID SEGARRA [5%]; HÉCTOR MEDINA [5%] | 5.6h | 5.6h | 51.69 | 51.69 |
| 30 | 2.2.1.2.1.2 | Asignar recursos a las tareas en Project. | 17h? | 2016-11-14 A | 2016-11-16 A | 29 | 100% |  |  |  |  | DAVID SEGARRA [5%]; HÉCTOR MEDINA [5%] | 1.7h | 1.7h | 15.69 | 15.69 |
| 31 | 2.2.1.3 | **[PM]Seguimiento** | 10d | 2016-11-03 A | 2016-11-16 A |  | 100% |  |  |  |  |  | 9.6h | 9.6h | 88.61 | 88.61 |
| 32 | 2.2.1.3.1 | [PM]Regitrar de tiempos y % de realización de tareas en Project. | 80h? | 2016-11-03 A | 2016-11-16 A |  | 100% |  |  |  | finish no earlier than 2016-11-16 | DAVID SEGARRA [2%]; HÉCTOR MEDINA [2%]; IVAN PINA [2%]; JAUME LLORET [2%]; PABLO TORREGROSA [2%]; SAMUEL NAVARRO [2%] | 9.6h | 9.6h | 88.61 | 88.61 |
| 33 | 2.2.2 | **V1** | 7.79d? | 2016-11-03 A | 2016-11-14 |  | 44% | 4.37d? | 2.21d |  |  |  | 159.79h | 53.37h | 1,474.87 | 492.59 |
| 34 | 2.2.2.1 | **[V1]Diseño de requerimientos y funciones de red.** | 2.02d? | 2016-11-04 | 2016-11-08 | 22 |  |  | 2.21d | 0d |  |  | 30h |  | 276.9 |  |
| 35 | 2.2.2.1.1 | Especificar que logros | 8.06h? | 2016-11-04 | 2016-11-07 |  |  |  | 2.21d | 0d |  | DAVID SEGARRA [93%]; HÉCTOR MEDINA [93%] | 15h |  | 138.45 |  |
| 36 | 2.2.2.1.2 | Especificar tipos de usuarios | 8.06h? | 2016-11-07 | 2016-11-08 | 35 |  |  | 2.21d |  |  | HÉCTOR MEDINA [93%]; DAVID SEGARRA [93%] | 15h |  | 138.45 |  |
| 37 | 2.2.2.2 | **[V1] Diseño técnico del motor de red.** | 3.93d? | 2016-11-08 | 2016-11-14 | 34 |  |  | 2.21d |  |  |  | 58h |  | 535.34 |  |
| 38 | 2.2.2.2.1 | Realizar diagrama | 8.89h? | 2016-11-08 | 2016-11-09 |  |  |  | 2.21d | 0d |  | DAVID SEGARRA [90%]; HÉCTOR MEDINA [90%] | 16h |  | 147.68 |  |
| 39 | 2.2.2.2.2 | Implementar diagrama | 22.58h? | 2016-11-09 | 2016-11-14 | 38 |  |  | 2.21d |  |  | DAVID SEGARRA [93%]; HÉCTOR MEDINA [93%] | 42h |  | 387.66 |  |
| 40 | 2.2.2.3 | **[V1]Documentación de diseño de mecánicas de los NPCs.** | 2.04d? | 2016-11-03 A | 2016-11-07 |  | 75% | 0.51d? | 0d |  |  |  | 32h | 24h | 295.35 | 221.51 |
| 41 | 2.2.2.3.1 | **Cria de Alien** | 1.02d? | 2016-11-03 A | 2016-11-04 A |  | 100% |  |  |  |  |  | 8h | 8h | 73.83 | 73.83 |
| 42 | 2.2.2.3.1.1 | Especificar al detalle mecanicas básicas de Cria de Alien | 3.06h? | 2016-11-03 A | 2016-11-03 A |  | 100% |  |  |  | start no earlier than 2016-11-03 | SAMUEL NAVARRO [98%] | 3h | 3h | 27.68 | 27.68 |
| 43 | 2.2.2.3.1.2 | Especificar mecanicas especiales de Cria de Alien | 2.04h? | 2016-11-03 A | 2016-11-03 A | 42 | 100% |  |  |  |  | SAMUEL NAVARRO [98%] | 2h | 2h | 18.46 | 18.46 |
| 44 | 2.2.2.3.1.3 | Especificar casos de uso de las mecánicas. | 1.02h? | 2016-11-03 A | 2016-11-03 A | 43 | 100% |  |  |  |  | SAMUEL NAVARRO [98%] | 1h | 1h | 9.23 | 9.23 |
| 45 | 2.2.2.3.1.4 | Dibujar mecanicas de Cria de Alien | 2.04h? | 2016-11-03 A | 2016-11-04 A | 44 | 100% |  |  |  |  | SAMUEL NAVARRO [98%] | 2h | 2h | 18.46 | 18.46 |
| 46 | 2.2.2.3.2 | **Alien Soldado** | 1.02d? | 2016-11-04 A | 2016-11-07 | 41 | 50% | 0.51d? | 0d |  |  |  | 8h | 4h | 73.84 | 36.94 |
| 47 | 2.2.2.3.2.1 | Especificar al detalle mecanicas básicas de Alien Soldado | 3.06h? | 2016-11-04 A | 2016-11-04 A |  | 100% |  |  |  |  | SAMUEL NAVARRO [98%] | 3h | 3h | 27.69 | 27.69 |
| 48 | 2.2.2.3.2.2 | Especificar mecanicas especiales de Alien Soldado | 2.04h? | 2016-11-04 A | 2016-11-04 | 47 | 50% | 1.02h? | 0d |  |  | SAMUEL NAVARRO [98%] | 2h | 1h | 18.46 | 9.25 |
| 49 | 2.2.2.3.2.3 | Especificar casos de uso de las mecánicas. | 1.02h? | 2016-11-04 | 2016-11-04 | 48 |  |  | 0d |  |  | SAMUEL NAVARRO [98%] | 1h |  | 9.23 |  |
| 50 | 2.2.2.3.2.4 | Dibujar mecanicas de Alien Soldado | 2.04h? | 2016-11-04 | 2016-11-07 | 49 |  |  | 0d |  |  | SAMUEL NAVARRO [98%] | 2h |  | 18.46 |  |

Notes:
- 27: 23.04 h
- 28: 23.04 h
- 29: 16.02 h
- 30: 17.02 h
- 31: 21.6 h
- 32: 21.6 h
- 34: 15 h
- 35: Apenas hecho
- 37: 29 h
- 38: Apenas hecho
- 40: 12 h / Mejoras en este y los dos apartados siguientes ras correción del profesor
- 41: 1.5 H
- 46: 2.1 H

| ID | WBS | Task | Duration | Start | Finish | Predecessors | Complete | Remaining | Total slack | Free slack | Constraint | Resources | Work | Actual work | Cost | Actual cost |
| --- | --- | --- | --- | --- | --- | --- | --- | --- | --- | --- | --- | --- | --- | --- | --- | --- |
| 51 | 2.2.2.3.3 | **Alien Berserker** | 1.02d? | 2016-11-03 A | 2016-11-04 A |  | 100% |  |  |  |  |  | 8h | 8h | 73.84 | 73.84 |
| 52 | 2.2.2.3.3.1 | Especificar al detalle mecanicas básicas de Alien Berserker | 3.06h? | 2016-11-03 A | 2016-11-03 A |  | 100% |  |  |  | start no earlier than 2016-11-03 | IVAN PINA [98%] | 3h | 3h | 27.69 | 27.69 |
| 53 | 2.2.2.3.3.2 | Especificar mecanicas especiales de Alien Berserker | 2.04h? | 2016-11-03 A | 2016-11-03 A | 52 | 100% |  |  |  |  | IVAN PINA [98%] | 2h | 2h | 18.46 | 18.46 |
| 54 | 2.2.2.3.3.3 | Especificar casos de uso de las mecánicas. | 1.02h? | 2016-11-03 A | 2016-11-03 A | 53 | 100% |  |  |  |  | IVAN PINA [98%] | 1h | 1h | 9.23 | 9.23 |
| 55 | 2.2.2.3.3.4 | Dibujar mecanicas de Alien Berserker | 2.04h? | 2016-11-03 A | 2016-11-04 A | 54 | 100% |  |  |  |  | IVAN PINA [98%] | 2h | 2h | 18.46 | 18.46 |
| 56 | 2.2.2.3.4 | **Alien Jefe** | 1.02d? | 2016-11-04 A | 2016-11-07 | 51 | 50% | 0.51d? | 0d |  |  |  | 8h | 4h | 73.84 | 36.91 |
| 57 | 2.2.2.3.4.1 | Especificar al detalle mecanicas básicas de Alien Jefe | 3.06h? | 2016-11-04 A | 2016-11-04 A |  | 100% |  |  |  |  | IVAN PINA [98%] | 3h | 3h | 27.69 | 27.69 |
| 58 | 2.2.2.3.4.2 | Especificar mecanicas especiales de Alien Jefe | 2.04h? | 2016-11-04 A | 2016-11-04 | 57 | 50% | 1.02h? | 0d |  |  | IVAN PINA [98%] | 2h | 1h | 18.46 | 9.22 |
| 59 | 2.2.2.3.4.3 | Especificar casos de uso de las mecánicas. | 1.02h? | 2016-11-04 | 2016-11-04 | 58 |  |  | 0d |  |  | IVAN PINA [98%] | 1h |  | 9.23 |  |
| 60 | 2.2.2.3.4.4 | Dibujar mecanicas de Alien Jefe | 2.04h? | 2016-11-04 | 2016-11-07 | 59 |  |  | 0d |  |  | IVAN PINA [98%] | 2h |  | 18.46 |  |
| 61 | 2.2.2.4 | **[V1]Documento de diseño técnico de la arquitectura de IA** | 1.28d? | 2016-11-07 A | 2016-11-08 | 40 | 75% | 0.32d? | 6.68d |  |  |  | 19.79h | 14.84h | 182.68 | 136.97 |
| 62 | 2.2.2.4.1 | Especificar IA de Cria de Alien | 5h? | 2016-11-07 A | 2016-11-07 A |  | 100% |  |  |  |  | SAMUEL NAVARRO [98%] | 4.9h | 4.9h | 45.19 | 45.19 |
| 63 | 2.2.2.4.2 | Especificar IA de Alien Soldado | 5h? | 2016-11-07 A | 2016-11-08 | 62 | 52% | 2.42h? | 6.71d |  |  | SAMUEL NAVARRO [98%] | 4.9h | 2.52h | 45.19 | 23.3 |
| 64 | 2.2.2.4.3 | Especificar IA de Alien Berserker | 5.1h? | 2016-11-07 A | 2016-11-07 A |  | 100% |  |  |  |  | IVAN PINA [98%] | 5h | 5h | 46.15 | 46.15 |
| 65 | 2.2.2.4.4 | Especificar IA de Alien Jefe | 5.1h? | 2016-11-07 A | 2016-11-08 | 64 | 48% | 2.63h? | 6.68d |  |  | IVAN PINA [98%] | 5h | 2.42h | 46.15 | 22.33 |
| 66 | 2.2.2.5 | **[V1]Documento de diseño de sistemas de toma de decisión** | 1.28d? | 2016-11-03 A | 2016-11-04 |  | 75% | 0.32d? | 8.72d |  |  |  | 20h | 14.53h | 184.6 | 134.11 |
| 67 | 2.2.2.5.1 | Crear diagrama de toma de decisiones | 4.08h? | 2016-11-03 A | 2016-11-03 A |  | 100% |  |  |  | start no earlier than 2016-11-03 | JAUME LLORET [98%]; PABLO TORREGROSA [98%] | 8h | 8h | 73.84 | 73.84 |
| 68 | 2.2.2.5.2 | Especificar las tomas de decisiones, de Protagonista | 2.04h? | 2016-11-03 A | 2016-11-03 A | 67 | 100% |  |  |  |  | JAUME LLORET [98%] | 2h | 2h | 18.46 | 18.46 |
| 69 | 2.2.2.5.3 | Especificar las tomas de decisiones, de Cria de Alien | 2.04h? | 2016-11-03 A | 2016-11-03 A | 67 | 100% |  |  |  |  | PABLO TORREGROSA [98%] | 2h | 2h | 18.46 | 18.46 |
| 70 | 2.2.2.5.4 | Especificar las tomas de decisiones, de Alien Berserker | 2.04h? | 2016-11-03 A | 2016-11-04 | 68 | 63% | 0.75h? | 8.72d | 0d |  | JAUME LLORET [98%] | 2h | 1.26h | 18.46 | 11.68 |
| 71 | 2.2.2.5.5 | Especificar las tomas de decisiones, de Alien Soldado | 2.04h? | 2016-11-03 A | 2016-11-04 | 69 | 63% | 0.75h? | 8.72d | 0d |  | PABLO TORREGROSA [98%] | 2h | 1.26h | 18.46 | 11.68 |
| 72 | 2.2.2.5.6 | Especificar las tomas de decisiones, de Alien Jefe | 2.08h? | 2016-11-04 | 2016-11-04 | 70, 71 |  |  | 8.72d |  |  | JAUME LLORET [96%]; PABLO TORREGROSA [96%] | 4h |  | 36.92 |  |
| 73 | 2.2.3 | **V2** | 10d? | 2016-11-02 A | 2016-11-16 A |  | 100% |  |  |  |  |  | 181.44h | 181.44h | 1,674.71 | 1,674.71 |
| 74 | 2.2.3.1 | **[V2]Mecánicas básicas entidades sin IA.** | 3.83d? | 2016-11-09 A | 2016-11-14 A | 99 | 100% |  |  |  |  |  | 60h | 60h | 553.8 | 553.8 |
| 75 | 2.2.3.1.1 | Estudiar mecánicas | 5.1h? | 2016-11-09 A | 2016-11-09 A |  | 100% |  |  |  |  | IVAN PINA [98%]; SAMUEL NAVARRO [98%] | 10h | 10h | 92.3 | 92.3 |
| 76 | 2.2.3.1.2 | Programar mecánicas | 15.31h? | 2016-11-09 A | 2016-11-11 A | 75 | 100% |  |  |  |  | IVAN PINA [98%]; SAMUEL NAVARRO [98%] | 30h | 30h | 276.9 | 276.9 |
| 77 | 2.2.3.1.3 | Realizar pruebas | 5.1h? | 2016-11-11 A | 2016-11-14 A | 76 | 100% |  |  |  |  | IVAN PINA [98%]; SAMUEL NAVARRO [98%] | 10h | 10h | 92.3 | 92.3 |
| 78 | 2.2.3.1.4 | Mejorar código | 5.1h? | 2016-11-14 A | 2016-11-14 A | 77 | 100% |  |  |  |  | IVAN PINA [98%]; SAMUEL NAVARRO [98%] | 10h | 10h | 92.3 | 92.3 |

Notes:
- 51: 2.4 H
- 56: 2.35 H
- 61: 20 h
- 62: 0.34 H
- 63: 0.34 H
- 64: 1 H
- 65: 1 H
- 66: 14 h
- 67: 5.35 H
- 68: 2 H
- 69: 0.3 H
- 70: 1 H
- 71: 0.2 H
- 72: 1 H
- 74: 30 h
- 75: en iter 3, 4 y 5 e hito 2 y 3 iter 1
- 76: 4 H

| ID | WBS | Task | Type | Duration | Start | Finish | Predecessors | Complete | Constraint | Resources | Work | Actual work | Cost | Actual cost |
| --- | --- | --- | --- | --- | --- | --- | --- | --- | --- | --- | --- | --- | --- | --- |
| 79 | 2.2.3.2 | **[V2]Diseño e implementación de la Arquitectura basada en componentes.** |  | 7.21d? | 2016-11-07 A | 2016-11-16 A | 111 | 100% |  |  | 121.36h | 121.36h | 1,120.17 | 1,120.17 |
| 80 | 2.2.3.2.1 | Realizar esquemas |  | 17.78h? | 2016-11-07 A | 2016-11-10 A |  | 100% |  | JAUME LLORET [90%]; PABLO TORREGROSA [90%] | 32h | 32h | 295.36 | 295.36 |
| 81 | 2.2.3.2.2 | Realizar diagrama |  | 16.33h? | 2016-11-10 A | 2016-11-14 A | 80 | 100% |  | JAUME LLORET [98%]; PABLO TORREGROSA [98%] | 32h | 32h | 295.36 | 295.36 |
| 82 | 2.2.3.2.3 | Comprobar errores |  | 11.73h? | 2016-11-14 A | 2016-11-15 A | 81 | 100% |  | JAUME LLORET [98%]; PABLO TORREGROSA [98%] | 23h | 23h | 212.29 | 212.29 |
| 83 | 2.2.3.2.4 | Reediseñar diagrama | manual | 11.84h | 2016-11-15 A | 2016-11-16 A | 82 | 100% | finish no earlier than 2016-11-16 | JAUME LLORET [98%]; PABLO TORREGROSA [98%]; IVAN PINA [48%]; SAMUEL NAVARRO [48%] | 34.36h | 34.36h | 317.16 | 317.16 |
| 84 | 2.2.3.3 | [V2]Control del player por motor de físicas 2D, Dynamic o kinematic | milestone | 0d? | 2016-11-02 A | 2016-11-02 A |  | 100% |  | DAVID SEGARRA; HÉCTOR MEDINA |  |  |  |  |
| 85 | 2.2.3.4 | **[V2]Formato propio para la definición de los niveles (documento con la especificación del formato)** |  | 1d? | 2016-11-03 A | 2016-11-03 A |  | 100% |  | DAVID SEGARRA [1%] | 0.08h | 0.08h | 0.74 | 0.74 |
| 86 | 2.2.3.4.1 | Leer documento |  | 1d? | 2016-11-03 A | 2016-11-03 A |  | 100% |  |  |  |  |  |  |
| 87 | 2.2.3.4.2 | Rellenar documento |  | 1d? | 2016-11-03 A | 2016-11-03 A |  | 100% |  |  |  |  |  |  |
| 88 | 2.2.3.4.3 | Analizar documento |  | 1d? | 2016-11-03 A | 2016-11-03 A |  | 100% |  |  |  |  |  |  |
| 89 | 2.2.3.4.4 | Actulizar documento |  | 1d? | 2016-11-03 A | 2016-11-03 A |  | 100% |  |  |  |  |  |  |
| 90 | 2.2.4 | **PD** |  | 1d? | 2016-11-03 A | 2016-11-03 A |  | 100% |  |  | 8h | 8h |  |  |
| 91 | 2.2.4.1 | [PD]I1. Video con animación del logo de la empresa |  | 1d? | 2016-11-03 A | 2016-11-03 A |  | 100% |  | DAVID SEGARRA; SAMUEL NAVARRO | 8h | 8h |  |  |
| 92 | 2.2.5 | **RV** |  | 7.48d? | 2016-11-04 A | 2016-11-15 A |  | 100% |  |  | 49.4h | 49.4h | 455.96 | 455.96 |
| 93 | 2.2.5.1 | **[RV]I1. Boceto de lo personajes.** |  | 0.97d? | 2016-11-14 A | 2016-11-15 A | 37 | 100% |  |  | 14.4h | 14.4h | 132.91 | 132.91 |
| 94 | 2.2.5.1.1 | Dibujar Cría de Alien, diferentes perspectivas |  | 2.58h? | 2016-11-14 A | 2016-11-15 A |  | 100% |  | HÉCTOR MEDINA [93%] | 2.4h | 2.4h | 22.15 | 22.15 |
| 95 | 2.2.5.1.2 | Dibujar Alien Soldado, diferentes perspectivas |  | 2.58h? | 2016-11-15 A | 2016-11-15 A | 94 | 100% |  | HÉCTOR MEDINA [93%] | 2.4h | 2.4h | 22.15 | 22.15 |
| 96 | 2.2.5.1.3 | Dibujar Alien Berserker, diferentes perspectivas |  | 2.58h? | 2016-11-14 A | 2016-11-15 A |  | 100% |  | DAVID SEGARRA [93%] | 2.4h | 2.4h | 22.15 | 22.15 |
| 97 | 2.2.5.1.4 | Dibujar Alien Jefe, diferentes perspectivas |  | 2.58h? | 2016-11-15 A | 2016-11-15 A | 96 | 100% |  | DAVID SEGARRA [93%] | 2.4h | 2.4h | 22.15 | 22.15 |
| 98 | 2.2.5.1.5 | Dibujar Personaje principal, diferentes perspectivas |  | 2.58h? | 2016-11-15 A | 2016-11-15 A | 97, 95 | 100% |  | DAVID SEGARRA [93%]; HÉCTOR MEDINA [93%] | 4.8h | 4.8h | 44.3 | 44.3 |
| 99 | 2.2.5.2 | **[RV]I6. Bocetos de los elementos.** |  | 0.77d? | 2016-11-08 A | 2016-11-09 A | 61 | 100% |  |  | 11h | 11h | 101.53 | 101.53 |
| 100 | 2.2.5.2.1 | Dibujar metralleta, diferentes perspectivas |  | 1.02h? | 2016-11-08 A | 2016-11-08 A |  | 100% |  | IVAN PINA [98%] | 1h | 1h | 9.23 | 9.23 |
| 101 | 2.2.5.2.2 | Dibujar Fúsil Laser, diferentes perspecgivas |  | 1.02h? | 2016-11-08 A | 2016-11-08 A | 100 | 100% |  | IVAN PINA [98%] | 1h | 1h | 9.23 | 9.23 |
| 102 | 2.2.5.2.3 | Dibujar Escopeta, diferentes perspectivas |  | 1.02h? | 2016-11-08 A | 2016-11-08 A | 101 | 100% |  | IVAN PINA [98%] | 1h | 1h | 9.23 | 9.23 |
| 103 | 2.2.5.2.4 | Dibujar Llaves, diferentes perspectivas |  | 1.02h? | 2016-11-08 A | 2016-11-08 A | 102 | 100% |  | IVAN PINA [98%] | 1h | 1h | 9.23 | 9.23 |
| 104 | 2.2.5.2.5 | Dibujar Munición pistola, diferentes perspectivas |  | 1.02h? | 2016-11-08 A | 2016-11-08 A | 103 | 100% |  | IVAN PINA [98%] | 1h | 1h | 9.23 | 9.23 |
| 105 | 2.2.5.2.6 | Dibujar Munición lanzagranadas, diferentes perspectivas |  | 1.02h? | 2016-11-08 A | 2016-11-09 A | 104 | 100% |  | IVAN PINA [98%] | 1h | 1h | 9.23 | 9.23 |
| 106 | 2.2.5.2.7 | Dibujar cuchillo, diferentes perspectivas |  | 1.02h? | 2016-11-08 A | 2016-11-08 A |  | 100% |  | SAMUEL NAVARRO [98%] | 1h | 1h | 9.23 | 9.23 |
| 107 | 2.2.5.2.8 | Dibujar Pistola, diferentes perspectivas |  | 1.02h? | 2016-11-08 A | 2016-11-08 A | 106 | 100% |  | SAMUEL NAVARRO [98%] | 1h | 1h | 9.23 | 9.23 |
| 108 | 2.2.5.2.9 | Dibujar Lanzagranadas, diferentes perspectivas |  | 1.02h? | 2016-11-08 A | 2016-11-08 A | 107 | 100% |  | SAMUEL NAVARRO [98%] | 1h | 1h | 9.23 | 9.23 |
| 109 | 2.2.5.2.10 | Dibujar Munición metralleta, diferentes perspectivas |  | 1.02h? | 2016-11-08 A | 2016-11-08 A | 108 | 100% |  | SAMUEL NAVARRO [98%] | 1h | 1h | 9.23 | 9.23 |
| 110 | 2.2.5.2.11 | Dibujar Munición escopeta, diferentes perspectivas |  | 1.02h? | 2016-11-08 A | 2016-11-08 A | 109 | 100% |  | SAMUEL NAVARRO [98%] | 1h | 1h | 9.23 | 9.23 |

Notes:
- 79: 55 h
- 80: 20.2 H iter
- 81: basicamente todo el proyecto hasta principios de Marzo
- 85: 2 H
- 86: Hecho?
- 93: 12 h
- 94: 5.45 H en general
- 99: 12 h
- 100: 0.27 H
- 101: 0.13 H
- 102: 0.2 H
- 103: 0.04 H
- 104: 0.04 H
- 105: 0.04 H
- 106: 0.2 H
- 107: 0.2 H
- 108: 0.38 H
- 109: 0.15 H
- 110: 0.2 H

| ID | WBS | Task | Type | Duration | Start | Finish | Predecessors | Complete | Remaining | Actual start | Total slack | Free slack | Constraint | Resources | Work | Actual work | Cost | Actual cost |
| --- | --- | --- | --- | --- | --- | --- | --- | --- | --- | --- | --- | --- | --- | --- | --- | --- | --- | --- |
| 111 | 2.2.5.3 | **[RV]I7. Boceto del entorno.** |  | 1.51d? | 2016-11-04 A | 2016-11-07 A | 66 | 100% |  |  |  |  |  |  | 24h | 24h | 221.52 | 221.52 |
| 112 | 2.2.5.3.1 | Diseñar en papel del mapa |  | 4.08h? | 2016-11-04 A | 2016-11-04 A |  | 100% |  |  |  |  |  | JAUME LLORET [98%]; PABLO TORREGROSA [98%] | 8h | 8h | 73.84 | 73.84 |
| 113 | 2.2.5.3.2 | Diseñar habitaciones del mapa con detalle |  | 6h? | 2016-11-04 A | 2016-11-07 A | 112 | 100% |  |  |  |  |  | JAUME LLORET; PABLO TORREGROSA | 12h | 12h | 110.76 | 110.76 |
| 114 | 2.2.5.3.3 | Especificar materiales de la nave |  | 2h? | 2016-11-07 A | 2016-11-07 A | 113 | 100% |  |  |  |  |  | JAUME LLORET; PABLO TORREGROSA | 4h | 4h | 36.92 | 36.92 |
| 115 | 2.3 | **ITERACIÓN 3** |  | 10d? | 2016-11-17 | 2016-11-30 | 20 | 66% | 3.45d? | 2016-11-16 |  |  |  |  | 403.37h | 205.8h | 3,723.09 | 1,899.53 |
| 116 | 2.3.1 | **PM** |  | 9d? | 2016-11-17 A | 2016-11-29 |  | 79% | 1.86d? |  | 1d |  |  |  | 40.59h | 19.42h | 374.63 | 179.25 |
| 117 | 2.3.1.1 | **[PM]Planificación** |  | 1.38d? | 2016-11-22 A | 2016-11-23 A |  | 100% |  |  |  |  |  |  | 10.78h | 10.78h | 99.5 | 99.5 |
| 118 | 2.3.1.1.1 | **[PM]Detallar plan iteraciones del mes de Noviembre-Diciembre.** |  | 1.38d? | 2016-11-22 A | 2016-11-23 A | 148 | 100% |  |  |  |  |  |  | 10.78h | 10.78h | 99.5 | 99.5 |
| 119 | 2.3.1.1.1.1 | Creación subtareas y precedencias en Project. |  | 5h? | 2016-11-22 A | 2016-11-23 A |  | 100% |  |  |  |  | start no earlier than 2016-11-17 | HÉCTOR MEDINA [98%] | 4.9h | 4.9h | 45.23 | 45.23 |
| 120 | 2.3.1.1.1.2 | Asignar recursos a las tareas en Project. |  | 6h? | 2016-11-23 A | 2016-11-23 A | 119 | 100% |  |  |  |  | finish no earlier than 2016-11-17 | HÉCTOR MEDINA [98%] | 5.88h | 5.88h | 54.27 | 54.27 |
| 121 | 2.3.1.2 | **[PM]Seguimiento** |  | 9d? | 2016-11-17 A | 2016-11-29 A |  | 100% |  |  |  |  |  |  | 8.64h | 8.64h | 79.75 | 79.75 |
| 122 | 2.3.1.2.1 | [PM]Regitrar de tiempos y % de realización de tareas en Project. |  | 9d? | 2016-11-17 A | 2016-11-29 A |  | 100% |  |  |  |  |  | DAVID SEGARRA [2%]; IVAN PINA [2%]; JAUME LLORET [2%]; PABLO TORREGROSA [2%]; SAMUEL NAVARRO [2%]; HÉCTOR MEDINA [2%] | 8.64h | 8.64h | 79.75 | 79.75 |
| 123 | 2.3.1.3 | [PM]Aplicar el modelo EVA en Project. (NO, Hito 3 iter 3) |  | 21.6h? | 2016-11-23 | 2016-11-28 | 118 |  |  |  | 8.05d |  |  | HÉCTOR MEDINA [98%] | 21.17h |  | 195.38 |  |
| 124 | 2.3.2 | **TAG** |  | 3.75d? | 2016-11-24 | 2016-11-29 |  |  |  |  | 1.25d |  |  |  | 88.2h |  | 814.09 |  |
| 125 | 2.3.2.1 | **[TAG]E1. Visualización: visualizador OpenGL 4.X simple, con datos por programa. Shader Básico.** |  | 3.75d? | 2016-11-24 | 2016-11-29 | 159 |  |  |  | 1.25d |  |  |  | 88.2h |  | 814.09 |  |
| 126 | 2.3.2.1.1 | Estudiar algoritmo |  | 8h? | 2016-11-24 | 2016-11-24 |  |  |  |  | 1.25d | 0d |  | IVAN PINA [98%]; JAUME LLORET [98%]; PABLO TORREGROSA [98%] | 23.52h |  | 217.09 |  |
| 127 | 2.3.2.1.2 | Programar algoritmo |  | 12h? | 2016-11-25 | 2016-11-28 | 126 |  |  |  | 1.25d | 0d | start no earlier than 2016-11-21 | IVAN PINA [98%]; JAUME LLORET [98%]; PABLO TORREGROSA [98%] | 35.28h |  | 325.63 |  |
| 128 | 2.3.2.1.3 | Realizar pruebas |  | 8h? | 2016-11-28 | 2016-11-29 | 127 |  |  |  | 1.25d | 0d |  | IVAN PINA [98%]; JAUME LLORET [98%]; PABLO TORREGROSA [98%] | 23.52h |  | 217.09 |  |
| 129 | 2.3.2.1.4 | Optimizar código |  | 2h? | 2016-11-29 | 2016-11-29 | 128 |  |  |  | 1.25d |  |  | IVAN PINA [98%]; JAUME LLORET [98%]; PABLO TORREGROSA [98%] | 5.88h |  | 54.27 |  |
| 130 | 2.3.3 | **PD** |  | 8.7d? | 2016-11-16 A | 2016-11-29 A |  | 100% |  |  |  |  |  |  | 26.46h | 26.46h | 244.23 | 244.23 |
| 131 | 2.3.3.1 | **[PD]I1. Video con animación del logo de la empresa** |  | 1.12d? | 2016-11-28 A | 2016-11-29 A | 123 | 100% |  |  |  |  |  |  | 26.46h | 26.46h | 244.23 | 244.23 |
| 132 | 2.3.3.1.1 | Diseñar en papel de diferentes logos |  | 1h? | 2016-11-28 A | 2016-11-28 A |  | 100% |  |  |  |  |  | SAMUEL NAVARRO [98%]; DAVID SEGARRA [98%]; HÉCTOR MEDINA [98%] | 2.94h | 2.94h | 27.14 | 27.14 |
| 133 | 2.3.3.1.2 | Seleccionar logo |  | 0.5h? | 2016-11-28 A | 2016-11-28 A | 132 | 100% |  |  |  |  |  | SAMUEL NAVARRO [98%]; DAVID SEGARRA [98%]; HÉCTOR MEDINA [98%] | 1.47h | 1.47h | 13.57 | 13.57 |
| 134 | 2.3.3.1.3 | Digitalizar logotipo |  | 0.5h? | 2016-11-28 A | 2016-11-28 A | 133 | 100% |  |  |  |  |  | SAMUEL NAVARRO [98%]; DAVID SEGARRA [98%]; HÉCTOR MEDINA [98%] | 1.47h | 1.47h | 13.57 | 13.57 |
| 135 | 2.3.3.1.4 | Procesar imagen digitalmente |  | 2h? | 2016-11-28 A | 2016-11-29 A | 134 | 100% |  |  |  |  |  | DAVID SEGARRA [98%]; SAMUEL NAVARRO [98%]; HÉCTOR MEDINA [98%] | 5.88h | 5.88h | 54.27 | 54.27 |
| 136 | 2.3.3.1.5 | Retocar digitalmente de video con After Effects |  | 3h? | 2016-11-29 A | 2016-11-29 A | 135 | 100% |  |  |  |  |  | DAVID SEGARRA [98%]; HÉCTOR MEDINA [98%]; SAMUEL NAVARRO [98%] | 8.82h | 8.82h | 81.41 | 81.41 |
| 137 | 2.3.3.1.6 | Montar video con premiere |  | 2h? | 2016-11-29 A | 2016-11-29 A | 136 | 100% |  |  |  |  |  | HÉCTOR MEDINA [98%]; SAMUEL NAVARRO [98%]; DAVID SEGARRA [98%] | 5.88h | 5.88h | 54.27 | 54.27 |
| 138 | 2.3.3.2 | [PD]I2. Cartel juego/proyecto. | milestone | 0d? | 2016-11-16 A | 2016-11-16 A |  | 100% |  |  |  |  |  | HÉCTOR MEDINA [1%] |  |  |  |  |

Notes:
- 111: 12 h
- 115: 252.24 h
- 117: 23.04 h
- 118: 23.04 h
- 119: 23.04 h
- 120: 23.04 h
- 121: 21.6 h
- 122: 21.6 h
- 123: 21.6 h
- 125: 6 h
- 126: NO, Hito 1 iter 4 e Hito 2
- 131: 20 h
- 132: 1 H, en iter 2
- 133: 1 H, aquí
- 134: 14.5 H, en iter 5

| ID | WBS | Task | Type | Duration | Start | Finish | Predecessors | Complete | Remaining | Total slack | Free slack | Resources | Work | Actual work | Cost | Actual cost |
| --- | --- | --- | --- | --- | --- | --- | --- | --- | --- | --- | --- | --- | --- | --- | --- | --- |
| 139 | 2.3.4 | **V1** |  | 1.25d? | 2016-11-17 A | 2016-11-18 A |  | 100% |  |  |  |  | 29.4h | 29.4h | 271.36 | 271.36 |
| 140 | 2.3.4.1 | **[V1]Gestión de estados de la IA con Máquina de Estados.** |  | 1.25d? | 2016-11-17 A | 2016-11-18 A |  | 100% |  |  |  |  | 29.4h | 29.4h | 271.36 | 271.36 |
| 141 | 2.3.4.1.1 | Estudiar algoritmo |  | 2h? | 2016-11-17 A | 2016-11-17 A |  | 100% |  |  |  | PABLO TORREGROSA [98%]; IVAN PINA [98%]; JAUME LLORET [98%] | 5.88h | 5.88h | 54.27 | 54.27 |
| 142 | 2.3.4.1.2 | Programar algoritmo |  | 4h? | 2016-11-17 A | 2016-11-17 A | 141 | 100% |  |  |  | PABLO TORREGROSA [98%]; IVAN PINA [98%]; JAUME LLORET [98%] | 11.76h | 11.76h | 108.54 | 108.54 |
| 143 | 2.3.4.1.3 | Realizar pruebas |  | 2h? | 2016-11-17 A | 2016-11-17 A | 142 | 100% |  |  |  | PABLO TORREGROSA [98%]; IVAN PINA [98%]; JAUME LLORET [98%] | 5.88h | 5.88h | 54.27 | 54.27 |
| 144 | 2.3.4.1.4 | Optimizar código |  | 2h? | 2016-11-18 A | 2016-11-18 A | 143 | 100% |  |  |  | PABLO TORREGROSA [98%]; IVAN PINA [98%]; JAUME LLORET [98%] | 5.88h | 5.88h | 54.27 | 54.27 |
| 145 | 2.3.5 | **V2** |  | 6.62d? | 2016-11-17 A | 2016-11-25 |  | 64% | 2.39d? | 3.38d |  |  | 218.72h | 130.52h | 2,018.79 | 1,204.7 |
| 146 | 2.3.5.1 | [V2]Diseño e implementación de la Arquitectura basada en componentes | milestone | 0d? | 2016-11-17 | 2016-11-17 |  |  |  | 10d |  | JAUME LLORET |  |  |  |  |
| 147 | 2.3.5.2 | [V2]Mecánicas básicas entidades sin IA | milestone | 0d? | 2016-11-17 A | 2016-11-17 A |  | 100% |  |  |  | SAMUEL NAVARRO |  |  |  |  |
| 148 | 2.3.5.3 | **[V2]Control del player por motor de físicas 2D, Dynamic o kinematic** |  | 3.5d? | 2016-11-17 A | 2016-11-22 A |  | 100% |  |  |  |  | 82.32h | 82.32h | 759.81 | 759.81 |
| 149 | 2.3.5.3.1 | Incluir motor de físicas |  | 8h? | 2016-11-17 A | 2016-11-17 A |  | 100% |  |  |  | HÉCTOR MEDINA [98%]; SAMUEL NAVARRO [98%]; DAVID SEGARRA [98%] | 23.52h | 23.52h | 217.09 | 217.09 |
| 150 | 2.3.5.3.2 | Programar mecánicas |  | 10h? | 2016-11-18 A | 2016-11-21 A | 149 | 100% |  |  |  | HÉCTOR MEDINA [98%]; SAMUEL NAVARRO [98%]; DAVID SEGARRA [98%] | 29.4h | 29.4h | 271.36 | 271.36 |
| 151 | 2.3.5.3.3 | Realizar pruebas |  | 5h? | 2016-11-21 A | 2016-11-21 A | 150 | 100% |  |  |  | HÉCTOR MEDINA [98%]; SAMUEL NAVARRO [98%]; DAVID SEGARRA [98%] | 14.7h | 14.7h | 135.68 | 135.68 |
| 152 | 2.3.5.3.4 | Mejorar código |  | 5h? | 2016-11-21 A | 2016-11-22 A | 151 | 100% |  |  |  | HÉCTOR MEDINA [98%]; SAMUEL NAVARRO [98%]; DAVID SEGARRA [98%] | 14.7h | 14.7h | 135.68 | 135.68 |
| 153 | 2.3.5.4 | [V2]Creación de un cargador de niveles. | milestone | 0d? | 2016-11-17 | 2016-11-17 |  |  |  | 10d |  | DAVID SEGARRA; HÉCTOR MEDINA |  |  |  |  |
| 154 | 2.3.5.5 | **[V2]Implementación de cámara de seguimiento.** |  | 3.12d? | 2016-11-22 A | 2016-11-25 A | 148 | 100% |  |  |  |  | 48.2h | 48.2h | 444.89 | 444.89 |
| 155 | 2.3.5.5.1 | Estudiar tipos de cámaras |  | 5h? | 2016-11-22 A | 2016-11-23 A |  | 100% |  |  |  | DAVID SEGARRA [98%]; SAMUEL NAVARRO [98%] | 9.8h | 9.8h | 90.45 | 90.45 |
| 156 | 2.3.5.5.2 | Programar cámara |  | 10h? | 2016-11-23 A | 2016-11-24 A | 155 | 100% |  |  |  | DAVID SEGARRA [98%]; SAMUEL NAVARRO [98%] | 19.6h | 19.6h | 180.91 | 180.91 |
| 157 | 2.3.5.5.3 | Realizar pruebas |  | 5h? | 2016-11-24 A | 2016-11-24 A | 156 | 100% |  |  |  | DAVID SEGARRA [98%]; SAMUEL NAVARRO [98%] | 9.8h | 9.8h | 90.45 | 90.45 |
| 158 | 2.3.5.5.4 | Optimizar código |  | 5h? | 2016-11-25 A | 2016-11-25 A | 157 | 100% |  |  |  | DAVID SEGARRA [90%]; SAMUEL NAVARRO [90%] | 9h | 9h | 83.07 | 83.07 |
| 159 | 2.3.5.6 | **[V2]Mecánicas de acción.** |  | 3.75d? | 2016-11-18 | 2016-11-23 | 140 |  |  | 1.25d | 0d |  | 88.2h |  | 814.09 |  |
| 160 | 2.3.5.6.1 | Estudiar mecánicas |  | 5h? | 2016-11-18 | 2016-11-18 |  |  |  | 6.88d | 0d | PABLO TORREGROSA [98%]; IVAN PINA [98%]; JAUME LLORET [98%] | 14.7h |  | 135.68 |  |
| 161 | 2.3.5.6.2 | Programar mecánicas |  | 15h? | 2016-11-18 | 2016-11-22 | 160 |  |  | 6.88d | 0d | PABLO TORREGROSA [98%]; IVAN PINA [98%]; JAUME LLORET [98%] | 44.1h |  | 407.04 |  |
| 162 | 2.3.5.6.3 | Realizar pruebas |  | 5h? | 2016-11-22 | 2016-11-23 | 161 |  |  | 6.88d | 0d | PABLO TORREGROSA [98%]; IVAN PINA [98%]; JAUME LLORET [98%] | 14.7h |  | 135.68 |  |
| 163 | 2.3.5.6.4 | Mejorar código |  | 5h? | 2016-11-23 | 2016-11-23 | 162 |  |  | 6.88d |  | PABLO TORREGROSA [98%]; IVAN PINA [98%]; JAUME LLORET [98%] | 14.7h |  | 135.68 |  |

Notes:
- 140: 10 h
- 141: 11 H aquí
- 142: 20.2 H en iter 4
- 143: 6 H en iter 5
- 144: 18.3 en Hito 2
- 146: También en iter 4 y 5
- 147: 3 H
- 148: 28 h
- 149: También en iter 4
- 154: 17 h
- 155: También en iter 5
- 159: 30 h
- 160: iter 5 e Hito 2

| ID | WBS | Task | Type | Duration | Start | Finish | Predecessors | Total slack | Resources | Work | Cost |
| --- | --- | --- | --- | --- | --- | --- | --- | --- | --- | --- | --- |
| 164 | 2.4 | **ITERACIÓN 4** |  | 10d | 2016-12-01 | 2016-12-14 | 115 |  |  | 192h | 1,772.16 |
| 165 | 2.4.1 | **PM** |  | 1d? | 2016-12-01 | 2016-12-01 |  | 9d |  |  |  |
| 166 | 2.4.1.1 | **[PM]Planificación** |  | 1d? | 2016-12-01 | 2016-12-01 |  | 9d |  |  |  |
| 167 | 2.4.1.1.1 | **[PM]Detallar plan iteraciones del mes de Noviembre-Diciembre.** |  | 1d? | 2016-12-01 | 2016-12-01 |  | 9d |  |  |  |
| 168 | 2.4.1.1.1.1 | Creación subtareas y precedencias en Project. |  | 1d? | 2016-12-01 | 2016-12-01 |  | 9d |  |  |  |
| 169 | 2.4.1.1.1.2 | Asignar recursos a las tareas en Project. |  | 1d? | 2016-12-01 | 2016-12-01 |  | 9d |  |  |  |
| 170 | 2.4.1.2 | **[PM]Seguimiento** |  | 1d? | 2016-12-01 | 2016-12-01 |  | 9d |  |  |  |
| 171 | 2.4.1.2.1 | [PM]Regitrar de tiempos y % de realización de tareas en Project. |  | 1d? | 2016-12-01 | 2016-12-01 |  | 9d |  |  |  |
| 172 | 2.4.2 | **TAG** |  | 1d? | 2016-12-01 | 2016-12-01 |  | 9d |  | 192h | 1,772.16 |
| 173 | 2.4.2.1 | [TAG]E1. Visualización: visualizador OpenGL 4.X simple, con datos por programa. Shader Básico. | milestone | 0d? | 2016-12-01 | 2016-12-01 |  | 10d | PABLO TORREGROSA |  |  |
| 174 | 2.4.2.2 | **[TAG]E2. Gestor de recursos: Parser de objetos en multiples formatos, salida en modo texto.** |  | 1d? | 2016-12-01 | 2016-12-01 |  | 9d |  | 192h | 1,772.16 |
| 175 | 2.4.2.2.1 | Estudiar algoritmo |  | 1d? | 2016-12-01 | 2016-12-01 |  | 9d | DAVID SEGARRA; HÉCTOR MEDINA; IVAN PINA; JAUME LLORET; PABLO TORREGROSA; SAMUEL NAVARRO | 48h | 443.04 |
| 176 | 2.4.2.2.2 | Programar algoritmo |  | 1d? | 2016-12-01 | 2016-12-01 |  | 9d | DAVID SEGARRA; HÉCTOR MEDINA; IVAN PINA; JAUME LLORET; PABLO TORREGROSA; SAMUEL NAVARRO | 48h | 443.04 |
| 177 | 2.4.2.2.3 | Realizar pruebas |  | 1d? | 2016-12-01 | 2016-12-01 |  | 9d | DAVID SEGARRA; HÉCTOR MEDINA; IVAN PINA; JAUME LLORET; PABLO TORREGROSA; SAMUEL NAVARRO | 48h | 443.04 |
| 178 | 2.4.2.2.4 | Optimizar código |  | 1d? | 2016-12-01 | 2016-12-01 |  | 9d | DAVID SEGARRA; HÉCTOR MEDINA; IVAN PINA; JAUME LLORET; PABLO TORREGROSA; SAMUEL NAVARRO | 48h | 443.04 |
| 179 | 2.4.3 | **PD** |  | 1d? | 2016-12-01 | 2016-12-01 |  | 9d |  |  |  |
| 180 | 2.4.3.1 | **[PD]I2. Cartel juego/proyecto.** |  | 1d? | 2016-12-01 | 2016-12-01 |  | 9d | DAVID SEGARRA; HÉCTOR MEDINA; SAMUEL NAVARRO |  |  |
| 181 | 2.4.3.1.1 | Diseñar prototipos |  | 1d? | 2016-12-01 | 2016-12-01 |  | 9d | DAVID SEGARRA; HÉCTOR MEDINA; SAMUEL NAVARRO |  |  |
| 182 | 2.4.3.1.2 | Seleccionar protipos |  | 1d? | 2016-12-01 | 2016-12-01 |  | 9d |  |  |  |
| 183 | 2.4.3.1.3 | Diseñar de elementos básicos con Illustrator |  | 1d? | 2016-12-01 | 2016-12-01 |  | 9d |  |  |  |
| 184 | 2.4.3.1.4 | Diseñar y componer diferentes elementos con Photoshop |  | 1d? | 2016-12-01 | 2016-12-01 |  | 9d |  |  |  |
| 185 | 2.4.4 | **V1** |  | 1d? | 2016-12-01 | 2016-12-01 |  | 9d |  |  |  |
| 186 | 2.4.4.1 | **[V1]Pathfinding Básico con rejilla (A*/Dijkstra)** |  | 1d? | 2016-12-01 | 2016-12-01 |  | 9d |  |  |  |
| 187 | 2.4.4.1.1 | Estudiar algoritmo |  | 1d? | 2016-12-01 | 2016-12-01 |  | 9d |  |  |  |
| 188 | 2.4.4.1.2 | Programar algoritmo |  | 1d? | 2016-12-01 | 2016-12-01 |  | 9d |  |  |  |
| 189 | 2.4.4.1.3 | Realizar pruebas |  | 1d? | 2016-12-01 | 2016-12-01 |  | 9d |  |  |  |
| 190 | 2.4.4.1.4 | Optimizar código |  | 1d? | 2016-12-01 | 2016-12-01 |  | 9d |  |  |  |

Notes:
- 164: 216.64 h
- 166: 23.04 h
- 167: 23.04 h
- 168: 23.04 h
- 169: 23.04 h
- 170: 21.6 h
- 171: 21.6 h
- 174: 15 h
- 175: Hecho en hito 3 por Jaume
- 180: 12 h
- 181: en iter 3 y 5
- 186: 30 h

| ID | WBS | Task | Type | Duration | Start | Finish | Predecessors | Total slack | Free slack | Resources |
| --- | --- | --- | --- | --- | --- | --- | --- | --- | --- | --- |
| 191 | 2.4.4.2 | **[V1]Sistema de toma de decisiones con Lógica Difusa** |  | 1d? | 2016-12-01 | 2016-12-01 |  | 9d |  |  |
| 192 | 2.4.4.2.1 | Estudiar algoritmo |  | 1d? | 2016-12-01 | 2016-12-01 |  | 9d |  |  |
| 193 | 2.4.4.2.2 | Programar algoritmo |  | 1d? | 2016-12-01 | 2016-12-01 |  | 9d |  |  |
| 194 | 2.4.4.2.3 | Realizar pruebas |  | 1d? | 2016-12-01 | 2016-12-01 |  | 9d |  |  |
| 195 | 2.4.4.2.4 | Optimizar código |  | 1d? | 2016-12-01 | 2016-12-01 |  | 9d |  |  |
| 196 | 2.4.4.3 | [V1]Gestión de estados de la IA con Máquina de Estados. | milestone | 0d? | 2016-12-01 | 2016-12-01 |  | 10d |  | IVAN PINA; PABLO TORREGROSA |
| 197 | 2.4.4.4 | **[V1]Sistema de toma de decisiones con Behaviour Trees** |  | 1d? | 2016-12-01 | 2016-12-01 |  | 9d |  | IVAN PINA; PABLO TORREGROSA |
| 198 | 2.4.4.4.1 | Estudiar algoritmo |  | 1d? | 2016-12-01 | 2016-12-01 |  | 9d |  |  |
| 199 | 2.4.4.4.2 | Programar algoritmo |  | 1d? | 2016-12-01 | 2016-12-01 |  | 9d |  |  |
| 200 | 2.4.4.4.3 | Realizar pruebas |  | 1d? | 2016-12-01 | 2016-12-01 |  | 9d |  |  |
| 201 | 2.4.4.4.4 | Optimizar código |  | 1d? | 2016-12-01 | 2016-12-01 |  | 9d |  |  |
| 202 | 2.4.5 | **V2** |  | 4.38d? | 2016-12-01 | 2016-12-07 |  | 5.62d |  |  |
| 203 | 2.4.5.1 | [V2]Mecánicas básicas entidades sin IA. | milestone | 0d? | 2016-12-01 | 2016-12-01 |  | 10d |  | HÉCTOR MEDINA |
| 204 | 2.4.5.2 | [V2]Diseño e implementación de la Arquitectura basada en componentes. | milestone | 0d? | 2016-12-01 | 2016-12-01 |  | 10d |  | JAUME LLORET |
| 205 | 2.4.5.3 | [V2]Control del player por motor de físicas 2D, Dynamic o kinematic | milestone | 0d? | 2016-12-01 | 2016-12-01 |  | 10d |  | HÉCTOR MEDINA; DAVID SEGARRA; SAMUEL NAVARRO |
| 206 | 2.4.5.4 | **[V2]Creación de un cargador de niveles.** |  | 4.38d? | 2016-12-01 | 2016-12-07 |  | 5.62d |  | DAVID SEGARRA; HÉCTOR MEDINA |
| 207 | 2.4.5.4.1 | Estudiar cargador de niveles |  | 5h? | 2016-12-01 | 2016-12-01 |  | 5.62d | 0d |  |
| 208 | 2.4.5.4.2 | Programar cargador de niveles |  | 20h? | 2016-12-01 | 2016-12-06 | 207 | 5.62d | 0d |  |
| 209 | 2.4.5.4.3 | Realizar pruebas |  | 5h? | 2016-12-06 | 2016-12-06 | 208 | 5.62d | 0d |  |
| 210 | 2.4.5.4.4 | Optimizar código |  | 5h? | 2016-12-06 | 2016-12-07 | 209 | 5.62d |  |  |
| 211 | 2.4.5.5 | **[V2]Creación de un editor de niveles.** |  | 4.38d? | 2016-12-01 | 2016-12-07 |  | 5.62d |  |  |
| 212 | 2.4.5.5.1 | Estudiar editor de niveles |  | 5h? | 2016-12-01 | 2016-12-01 |  | 5.62d | 0d |  |
| 213 | 2.4.5.5.2 | Programar editor de niveles |  | 20h? | 2016-12-01 | 2016-12-06 | 212 | 5.62d | 0d |  |
| 214 | 2.4.5.5.3 | Realizar pruebas |  | 5h? | 2016-12-06 | 2016-12-06 | 213 | 5.62d | 0d |  |
| 215 | 2.4.5.5.4 | Optimizar código |  | 5h? | 2016-12-06 | 2016-12-07 | 214 | 5.62d |  |  |

Notes:
- 191: 30 h
- 197: 35 h
- 198: en iter 5 e Hito 2
- 206: 28 h
- 207: en iter 3
- 211: 55h

| ID | WBS | Task | Type | Duration | Start | Finish | Predecessors | Complete | Remaining | Total slack | Resources | Work | Actual work | Cost |
| --- | --- | --- | --- | --- | --- | --- | --- | --- | --- | --- | --- | --- | --- | --- |
| 216 | 2.4.5.6 | **[V2]Sistema de depuración visual de las físicas** |  | 1d? | 2016-12-01 | 2016-12-01 |  |  |  | 9d |  |  |  |  |
| 217 | 2.4.5.6.1 | Estudiar algoritmo |  | 1d? | 2016-12-01 | 2016-12-01 |  |  |  | 9d |  |  |  |  |
| 218 | 2.4.5.6.2 | Programar algoritmo |  | 1d? | 2016-12-01 | 2016-12-01 |  |  |  | 9d |  |  |  |  |
| 219 | 2.4.5.6.3 | Realizar pruebas |  | 1d? | 2016-12-01 | 2016-12-01 |  |  |  | 9d |  |  |  |  |
| 220 | 2.4.5.6.4 | Optimizar código |  | 1d? | 2016-12-01 | 2016-12-01 |  |  |  | 9d |  |  |  |  |
| 221 | 2.4.5.7 | **[V2]Uso de trazado de rayos y otros test de las fisicas.** |  | 1d? | 2016-12-01 | 2016-12-01 |  |  |  | 9d |  |  |  |  |
| 222 | 2.4.5.7.1 | Estudiar algoritmo |  | 1d? | 2016-12-01 | 2016-12-01 |  |  |  | 9d |  |  |  |  |
| 223 | 2.4.5.7.2 | Programar algoritmo |  | 1d? | 2016-12-01 | 2016-12-01 |  |  |  | 9d |  |  |  |  |
| 224 | 2.4.5.7.3 | Realizar pruebas |  | 1d? | 2016-12-01 | 2016-12-01 |  |  |  | 9d |  |  |  |  |
| 225 | 2.4.5.7.4 | Optimizar código |  | 1d? | 2016-12-01 | 2016-12-01 |  |  |  | 9d |  |  |  |  |
| 226 | 2.5 | **ITERACIÓN 5** |  | 7d | 2016-12-15 A | 2016-12-23 | 164 | 58% | 2.92d |  |  | 48h | 8h | 369.2 |
| 227 | 2.5.1 | **V2** |  | 1d? | 2016-12-15 | 2016-12-15 |  |  |  | 6d |  | 16h |  | 147.68 |
| 228 | 2.5.1.1 | [V2]Diseño e implementación de la Arquitectura basada en componentes. |  | 1d? | 2016-12-15 | 2016-12-15 |  |  |  | 6d | JAUME LLORET | 8h |  | 73.84 |
| 229 | 2.5.1.2 | [V2]Implementación de cámara de seguimiento. | milestone | 0d? | 2016-12-15 | 2016-12-15 |  |  |  | 7d | DAVID SEGARRA |  |  |  |
| 230 | 2.5.1.3 | [V2]Mecánicas básicas entidades sin IA. | milestone | 0d? | 2016-12-15 | 2016-12-15 |  |  |  | 7d | DAVID SEGARRA |  |  |  |
| 231 | 2.5.1.4 | [V2]Mecánicas de acción. |  | 1d? | 2016-12-15 | 2016-12-15 |  |  |  | 6d | DAVID SEGARRA | 8h |  | 73.84 |
| 232 | 2.5.2 | **V1** |  | 1d? | 2016-12-15 | 2016-12-15 |  |  |  | 6d |  | 24h |  | 221.52 |
| 233 | 2.5.2.1 | [V1]Sistema de toma de decisiones con Behaviour Trees |  | 1d? | 2016-12-15 | 2016-12-15 |  |  |  | 6d | IVAN PINA; PABLO TORREGROSA | 16h |  | 147.68 |
| 234 | 2.5.2.2 | [V1]Gestión de estados de la IA con Máquina de Estados. |  | 1d? | 2016-12-15 | 2016-12-15 |  |  |  | 6d | HÉCTOR MEDINA | 8h |  | 73.84 |
| 235 | 2.5.3 | **PD** |  | 1d? | 2016-12-15 A | 2016-12-15 A |  | 100% |  |  |  | 8h | 8h |  |
| 236 | 2.5.3.1 | [PD]I1. Video con animación del logo de la empresa |  | 1d? | 2016-12-15 A | 2016-12-15 A |  | 100% |  |  | SAMUEL NAVARRO | 8h | 8h |  |
| 237 | 2.5.3.2 | [PD]I2. Cartel juego/proyecto. | milestone | 0d? | 2016-12-15 A | 2016-12-15 A |  | 100% |  |  | SAMUEL NAVARRO |  |  |  |
| 238 | 2.5.4 | **PM** |  | 1d? | 2016-12-15 A | 2016-12-15 |  | 86% | 0.14d? | 6d |  |  |  |  |
| 239 | 2.5.4.1 | **[PM]Planificación** |  | 1d? | 2016-12-15 A | 2016-12-15 A |  | 100% |  |  |  |  |  |  |
| 240 | 2.5.4.1.1 | **[PM]Detallar plan iteraciones del mes de Noviembre-Diciembre.** |  | 1d? | 2016-12-15 A | 2016-12-15 A |  | 100% |  |  |  |  |  |  |
| 241 | 2.5.4.1.1.1 | Creación subtareas y precedencias en Project. |  | 1d? | 2016-12-15 A | 2016-12-15 A |  | 100% |  |  |  |  |  |  |
| 242 | 2.5.4.1.1.2 | Asignar recursos a las tareas en Project. |  | 1d? | 2016-12-15 A | 2016-12-15 A |  | 100% |  |  |  |  |  |  |

Notes:
- 216: 8 h
- 221: 17 h
- 226: 116.64 h
- 239: 23.04 h
- 240: 23.04 h
- 241: 23.04 h
- 242: 23.04 h

| ID | WBS | Task | Duration | Start | Finish | Predecessors | Complete | Total slack | Resources | Work | Cost |
| --- | --- | --- | --- | --- | --- | --- | --- | --- | --- | --- | --- |
| 243 | 2.5.4.2 | **[PM]Seguimiento** | 1d? | 2016-12-15 A | 2016-12-15 A |  | 100% |  |  |  |  |
| 244 | 2.5.4.2.1 | [PM]Regitrar de tiempos y % de realización de tareas en Project. | 1d? | 2016-12-15 A | 2016-12-15 A |  | 100% |  |  |  |  |
| 245 | 2.5.4.3 | [PM]Elaborar la presentación del Hito 1. | 1d? | 2016-12-15 A | 2016-12-15 A |  | 100% |  |  |  |  |
| 246 | 2.5.4.4 | [PM]Exponer la presentación del Hito 1. | 1d? | 2016-12-15 A | 2016-12-15 A |  | 100% |  |  |  |  |
| 247 | 2.5.4.5 | [PM]Confeccionar informes de Iteración e informe resumen de Hito 1. | 1d? | 2016-12-15 A | 2016-12-15 A |  | 100% |  |  |  |  |
| 248 | 2.5.4.6 | [PM]Comparar la planifición prevista y real en Project Hito 1. | 1d? | 2016-12-15 | 2016-12-15 |  |  | 6d |  |  |  |
| 249 | 3 | **HITO 2** | 26d? | 2016-12-26 | 2017-01-30 | 11 |  | 0d |  | 8h | 73.84 |
| 250 | 3.1 | **[PM]Detallar plan iteraciones del mes de Enero** | 1d? | 2016-12-26 | 2016-12-26 |  |  | 25d |  |  |  |
| 251 | 3.1.1 | Creación de subtareas y precedencias en Project. | 1d? | 2016-12-26 | 2016-12-26 |  |  | 25d |  |  |  |
| 252 | 3.1.2 | Asignar recursos a las tareas en Project. | 1d? | 2016-12-26 | 2016-12-26 |  |  | 25d |  |  |  |
| 253 | 3.2 | [PM]Revisar especifiación del proyecto. | 1d? | 2016-12-26 | 2016-12-26 |  |  | 25d |  |  |  |
| 254 | 3.3 | [PM]Reestimar el proyecto | 1d? | 2016-12-26 | 2016-12-26 |  |  | 25d |  |  |  |
| 255 | 3.4 | **ITERACIÓN 1** | 26d | 2016-12-26 | 2017-01-30 |  |  |  |  | 8h | 73.84 |
| 256 | 3.4.1 | [PM]Registrar de tiempos y % de realización de tareas en Project. | 1d? | 2016-12-26 | 2016-12-26 |  |  | 25d |  |  |  |
| 257 | 3.4.2 | [PM]Comparar la planificación prevista y real en Projects Hito 2 | 1d? | 2016-12-26 | 2016-12-26 |  |  | 25d |  |  |  |
| 258 | 3.4.3 | [PM]Confeccionar informes de Iteración e informe resumen de Hito 2 | 1d? | 2016-12-26 | 2016-12-26 |  |  | 25d |  |  |  |
| 259 | 3.4.4 | [TAG]E1. Visualización: visualizador OpenGL 4.X simple, con datos por programa. Shader Básico. | 1d? | 2016-12-26 | 2016-12-26 |  |  | 25d | PABLO TORREGROSA | 8h | 73.84 |
| 260 | 3.4.5 | [TAG]E3. Visualización: visualizador OpenGL 4.X simple, con datos por fichero. Shader básico | 1d? | 2016-12-26 | 2016-12-26 |  |  | 25d |  |  |  |
| 261 | 3.4.6 | [V1]Gestión de estados de la IA con Máquina de Estados. | 1d? | 2016-12-26 | 2016-12-26 |  |  | 25d |  |  |  |
| 262 | 3.4.7 | [V1]Sistema de toma de decisiones con Behaviour Trees | 1d? | 2016-12-26 | 2016-12-26 |  |  | 25d |  |  |  |
| 263 | 3.4.8 | **[V1]Sistema de control de movimiento con Steering Behaviours** | 1d? | 2016-12-26 | 2016-12-26 |  |  | 25d |  |  |  |
| 264 | 3.4.8.1 | Estudiar algoritmo | 1d? | 2016-12-26 | 2016-12-26 |  |  | 25d |  |  |  |
| 265 | 3.4.8.2 | Programar algoritmo | 1d? | 2016-12-26 | 2016-12-26 |  |  | 25d |  |  |  |
| 266 | 3.4.8.3 | Realizar pruebas | 1d? | 2016-12-26 | 2016-12-26 |  |  | 25d |  |  |  |
| 267 | 3.4.8.4 | Optimizar código | 1d? | 2016-12-26 | 2016-12-26 |  |  | 25d |  |  |  |

Notes:
- 243: 21.6 h
- 244: 21.6 h
- 245: 14.4 h
- 246: 14.4 h
- 247: 21.6 h
- 248: 21.6 h
- 249: 636 h
- 251: 4,8
- 252: 4,8
- 253: 28,8
- 254: 28,8
- 255: 568,8
- 256: 9,6
- 257: 9,6
- 258: 9,6
- 260: 5 / Falta confirmar cuando se terminó
- 263: 30

| ID | WBS | Task | Duration | Start | Finish | Total slack |
| --- | --- | --- | --- | --- | --- | --- |
| 268 | 3.4.9 | **[V1]Sistema de percepción sensorial.** | 1d? | 2016-12-26 | 2016-12-26 | 25d |
| 269 | 3.4.9.1 | Estudiar algoritmo | 1d? | 2016-12-26 | 2016-12-26 | 25d |
| 270 | 3.4.9.2 | Programar algoritmo | 1d? | 2016-12-26 | 2016-12-26 | 25d |
| 271 | 3.4.9.3 | Realizar pruebas | 1d? | 2016-12-26 | 2016-12-26 | 25d |
| 272 | 3.4.9.4 | Optimizar código | 1d? | 2016-12-26 | 2016-12-26 | 25d |
| 273 | 3.4.10 | **[V1]Sistema de Waypoints para Pathfinding continuo.** | 1d? | 2016-12-26 | 2016-12-26 | 25d |
| 274 | 3.4.10.1 | Estudiar algoritmo | 1d? | 2016-12-26 | 2016-12-26 | 25d |
| 275 | 3.4.10.2 | Programar algoritmo | 1d? | 2016-12-26 | 2016-12-26 | 25d |
| 276 | 3.4.10.3 | Realizar pruebas | 1d? | 2016-12-26 | 2016-12-26 | 25d |
| 277 | 3.4.10.4 | Optimizar código | 1d? | 2016-12-26 | 2016-12-26 | 25d |
| 278 | 3.4.11 | [V1]Editor in-game de parámetros y comportamientos de la IA | 1d? | 2016-12-26 | 2016-12-26 | 25d |
| 279 | 3.4.12 | [V2]Mecánicas de acción. | 1d? | 2016-12-26 | 2016-12-26 | 25d |
| 280 | 3.4.13 | [V2]Diseño e implementación de la Arquitectura basada en componentes. | 1d? | 2016-12-26 | 2016-12-26 | 25d |
| 281 | 3.4.14 | [V2]Mecánicas básicas entidades sin IA. | 1d? | 2016-12-26 | 2016-12-26 | 25d |
| 282 | 3.4.15 | **[V2]Powers-up y elementos adicionales** | 1d? | 2016-12-26 | 2016-12-26 | 25d |
| 283 | 3.4.15.1 | Especificar powers-up | 1d? | 2016-12-26 | 2016-12-26 | 25d |
| 284 | 3.4.15.2 | Programar powers-up | 1d? | 2016-12-26 | 2016-12-26 | 25d |
| 285 | 3.4.15.3 | Realizar pruebas | 1d? | 2016-12-26 | 2016-12-26 | 25d |
| 286 | 3.4.15.4 | Balancear powers-up | 1d? | 2016-12-26 | 2016-12-26 | 25d |
| 287 | 3.4.15.5 | Optimizar código | 1d? | 2016-12-26 | 2016-12-26 | 25d |
| 288 | 3.4.16 | **[V2]Implementación de cámara inteligente que ajuste ángulo y zoom.** | 1d? | 2016-12-26 | 2016-12-26 | 25d |
| 289 | 3.4.16.1 | Estudiar la cámara | 1d? | 2016-12-26 | 2016-12-26 | 25d |
| 290 | 3.4.16.2 | Programar cámara | 1d? | 2016-12-26 | 2016-12-26 | 25d |
| 291 | 3.4.16.3 | Realizar pruebas | 1d? | 2016-12-26 | 2016-12-26 | 25d |
| 292 | 3.4.16.4 | Optimizar código | 1d? | 2016-12-26 | 2016-12-26 | 25d |

Notes:
- 268: 12
- 273: 60
- 278: 90
- 282: 14
- 283: Sigue en Hito 3
- 288: 28

| ID | WBS | Task | Duration | Start | Finish | Predecessors | Total slack |
| --- | --- | --- | --- | --- | --- | --- | --- |
| 293 | 3.4.17 | **[V2]Integración de librería para GUI.** | 1d? | 2016-12-26 | 2016-12-26 |  | 25d |
| 294 | 3.4.17.1 | Ver distintas librerias | 1d? | 2016-12-26 | 2016-12-26 |  | 25d |
| 295 | 3.4.17.2 | Incluir librería | 1d? | 2016-12-26 | 2016-12-26 |  | 25d |
| 296 | 3.4.17.3 | Diseñar GUI | 1d? | 2016-12-26 | 2016-12-26 |  | 25d |
| 297 | 3.4.17.4 | Incluir GUI | 1d? | 2016-12-26 | 2016-12-26 |  | 25d |
| 298 | 3.4.17.5 | Realizar pruebas | 1d? | 2016-12-26 | 2016-12-26 |  | 25d |
| 299 | 3.4.18 | **[V2]Implementación de menús.** | 1d? | 2016-12-26 | 2016-12-26 |  | 25d |
| 300 | 3.4.18.1 | Diseñar menus | 1d? | 2016-12-26 | 2016-12-26 |  | 25d |
| 301 | 3.4.18.2 | Implementar menus | 1d? | 2016-12-26 | 2016-12-26 |  | 25d |
| 302 | 3.4.18.3 | Probar menus | 1d? | 2016-12-26 | 2016-12-26 |  | 25d |
| 303 | 3.4.18.4 | Optimizar menus | 1d? | 2016-12-26 | 2016-12-26 |  | 25d |
| 304 | 3.4.19 | **[V2]Oclusiones mediante portales/PVS** | 1d? | 2016-12-26 | 2016-12-26 |  | 25d |
| 305 | 3.4.19.1 | Estudiar algoritmo | 1d? | 2016-12-26 | 2016-12-26 |  | 25d |
| 306 | 3.4.19.2 | Programar algoritmo | 1d? | 2016-12-26 | 2016-12-26 |  | 25d |
| 307 | 3.4.19.3 | Realizar pruebas | 1d? | 2016-12-26 | 2016-12-26 |  | 25d |
| 308 | 3.4.19.4 | Optimizar código | 1d? | 2016-12-26 | 2016-12-26 |  | 25d |
| 309 | 3.4.20 | [V2]Sistema de Level-Of-Detail para la selección de la malla grafica de los objetos. | 1d? | 2016-12-26 | 2016-12-26 |  | 25d |
| 310 | 3.4.21 | [PD]I3. Trailer juego/proyecto | 1d? | 2016-12-26 | 2016-12-26 |  | 25d |
| 311 | 3.4.22 | [RV]I2. Modelado de personajes | 1d? | 2016-12-26 | 2016-12-26 |  | 25d |
| 312 | 3.4.23 | [RV]I3. Texturizado de personajes. | 1d? | 2016-12-26 | 2016-12-26 |  | 25d |
| 313 | 3.4.24 | [RV]I4. Rigging de los personajes. | 1d? | 2016-12-26 | 2016-12-26 |  | 25d |
| 314 | 4 | **HITO 3** | 47d? | 2017-01-31 | 2017-04-05 | 249 | 0d |
| 315 | 4.1 | **[PM]Detallar plan iteraciones del mes de Febrero** | 1d? | 2017-01-31 | 2017-01-31 |  | 46d |
| 316 | 4.1.1 | Creación de subtareas y precedencias en Project. | 1d? | 2017-01-31 | 2017-01-31 |  | 46d |
| 317 | 4.1.2 | Asignar recursos a las tareas en Project. | 1d? | 2017-01-31 | 2017-01-31 |  | 46d |

Notes:
- 293: 5
- 299: 35
- 300: Sigue en hito 3
- 304: 17
- 309: 17
- 310: 35
- 311: 90
- 312: 90
- 313: 12
- 314: 1077,8 h
- 315: 9,6
- 316: 4.8
- 317: 4.8

| ID | WBS | Task | Duration | Start | Finish | Total slack |
| --- | --- | --- | --- | --- | --- | --- |
| 318 | 4.2 | **ITERACIÓN 1** | 10d | 2017-01-31 | 2017-02-12 |  |
| 319 | 4.2.1 | [TAG]E4. Tipos de datos para entidades de tipo transformacion. Salida en modo texto | 1d? | 2017-01-31 | 2017-01-31 | 8d |
| 320 | 4.2.2 | [TAG]E5. Tipos de datos para entidades de tipo malla. Salida en modo texto | 1d? | 2017-01-31 | 2017-01-31 | 8d |
| 321 | 4.2.3 | [TAG]E6.Tipos de datos para entidades de tipo cámara y luz. Salida en modo texto | 1d? | 2017-01-31 | 2017-01-31 | 8d |
| 322 | 4.2.4 | [TAG]E7. Tipos de datos para entidades de tipo animación. Salida en modo texto | 1d? | 2017-01-31 | 2017-01-31 | 8d |
| 323 | 4.2.5 | [TAG]E9. Carga de modelos en formato múltiple en las entidades de tipo malla. Carga de varios ficheros para animación. Salida en modo texto | 1d? | 2017-01-31 | 2017-01-31 | 8d |
| 324 | 4.2.6 | [TAG]E16. IGC.Cargador de modelos, Movimiento del modelo, Movimiento de luces, Movimiento de cámara | 1d? | 2017-01-31 | 2017-01-31 | 8d |
| 325 | 4.2.7 | **[V1]Flocking: comportamiento grupal emergente** | 1d? | 2017-01-31 | 2017-01-31 | 8d |
| 326 | 4.2.7.1 | Estudiar algoritmo | 1d? | 2017-01-31 | 2017-01-31 | 8d |
| 327 | 4.2.7.2 | Programar algoritmo | 1d? | 2017-01-31 | 2017-01-31 | 8d |
| 328 | 4.2.7.3 | Realizar pruebas | 1d? | 2017-01-31 | 2017-01-31 | 8d |
| 329 | 4.2.7.4 | Optimizar código | 1d? | 2017-01-31 | 2017-01-31 | 8d |
| 330 | 4.2.8 | **[V1]Comunicación simulada básica entre NPCs(Blackboard)** | 1d? | 2017-01-31 | 2017-01-31 | 8d |
| 331 | 4.2.8.1 | Estudiar algoritmo | 1d? | 2017-01-31 | 2017-01-31 | 8d |
| 332 | 4.2.8.2 | Programar algoritmo | 1d? | 2017-01-31 | 2017-01-31 | 8d |
| 333 | 4.2.8.3 | Realizar pruebas | 1d? | 2017-01-31 | 2017-01-31 | 8d |
| 334 | 4.2.8.4 | Optimizar código | 1d? | 2017-01-31 | 2017-01-31 | 8d |
| 335 | 4.2.9 | **[V1]Sistema de memoria de estado y reacción para NPCs** | 1d? | 2017-01-31 | 2017-01-31 | 8d |
| 336 | 4.2.9.1 | Estudiar algoritmo | 1d? | 2017-01-31 | 2017-01-31 | 8d |
| 337 | 4.2.9.2 | Programar algoritmo | 1d? | 2017-01-31 | 2017-01-31 | 8d |
| 338 | 4.2.9.3 | Realizar pruebas | 1d? | 2017-01-31 | 2017-01-31 | 8d |
| 339 | 4.2.9.4 | Optimizar código | 1d? | 2017-01-31 | 2017-01-31 | 8d |
| 340 | 4.2.10 | [V2]Mecánicas básicas entidades sin IA. | 1d? | 2017-01-31 | 2017-01-31 | 8d |
| 341 | 4.2.11 | **[V2]Implementación del HUD** | 1d? | 2017-01-31 | 2017-01-31 | 8d |
| 342 | 4.2.11.1 | Diseñar HUD | 1d? | 2017-01-31 | 2017-01-31 | 8d |
| 343 | 4.2.11.2 | Implementar HUD | 1d? | 2017-01-31 | 2017-01-31 | 8d |
| 344 | 4.2.11.3 | Realizar pruebas | 1d? | 2017-01-31 | 2017-01-31 | 8d |
| 345 | 4.2.11.4 | Mejorar HUD | 1d? | 2017-01-31 | 2017-01-31 | 8d |
| 346 | 4.2.12 | [RV]I2. Modelado de personajes | 1d? | 2017-01-31 | 2017-01-31 | 8d |
| 347 | 4.2.13 | [RV]I3. Texturizado de personajes. | 1d? | 2017-01-31 | 2017-01-31 | 8d |
| 348 | 4.2.14 | [RV]I4. Captura de movimiento | 1d? | 2017-01-31 | 2017-01-31 | 8d |
| 349 | 4.2.15 | [RV]I5. Animación de los personajes | 1d? | 2017-01-31 | 2017-01-31 | 8d |

Notes:
- 318: 657
- 319: 10
- 320: 25
- 321: 15
- 322: 8
- 323: 15
- 324: 60
- 325: 50
- 330: 35
- 335: 26
- 341: 23
- 346: 90
- 347: 90
- 348: 60
- 349: 150

| ID | WBS | Task | Duration | Start | Finish | Total slack | Constraint |
| --- | --- | --- | --- | --- | --- | --- | --- |
| 350 | 4.3 | **ITERACIÓN 2** | 11d | 2017-02-13 | 2017-02-26 |  |  |
| 351 | 4.3.1 | [PM]Registrar de tiempos y % de realización de tareas en Project. | 1d? | 2017-02-13 | 2017-02-13 | 9d |  |
| 352 | 4.3.2 | [PM]Comparar la planificación prevista y real en Projects Hito 3 | 1d? | 2017-02-13 | 2017-02-13 | 9d |  |
| 353 | 4.3.3 | [PM]Confeccionar informes de Iteración e informe resumen de Hito 3 | 1d? | 2017-02-13 | 2017-02-13 | 9d |  |
| 354 | 4.3.4 | [PM]Elaborar la presentación del Hito 3. | 1d? | 2017-02-13 | 2017-02-13 | 9d |  |
| 355 | 4.3.5 | [PM]Exponer la presentación del Hito 3. | 1d? | 2017-02-13 | 2017-02-13 | 9d |  |
| 356 | 4.3.6 | [TAG]E10. Visualizador OpenGL 4.X de las entidades tipo malla. Shader Básico. Integración con el motor. Sin materiales, texturas, cámara ni luces | 1d? | 2017-02-13 | 2017-02-13 | 9d |  |
| 357 | 4.3.7 | [TAG]E11. Visualizador OpenGL 4.X de las entidades tipo malla. Shader básico. Con cámara y luces de varios tipos. Visualización con registro de cámaras y luces. | 1d? | 2017-02-13 | 2017-02-13 | 9d |  |
| 358 | 4.3.8 | [TAG]E15. Visualizador OpenGL 4.X con cuatro shaders avanzados | 1d? | 2017-02-13 | 2017-02-13 | 9d |  |
| 359 | 4.3.9 | [TAG]E14. Creación de una fachada entre el motor y la aplicación. | 1d? | 2017-02-13 | 2017-02-13 | 9d |  |
| 360 | 4.3.10 | [TAG]Optimizaciones del motor | 1d? | 2017-02-13 | 2017-02-13 | 9d |  |
| 361 | 4.3.11 | **[V1]Sistema de Navmeshes para pathfinding continuo** | 1d? | 2017-02-13 | 2017-02-13 | 9d |  |
| 362 | 4.3.11.1 | Estudiar algoritmo | 1d? | 2017-02-13 | 2017-02-13 | 9d |  |
| 363 | 4.3.11.2 | Programar algoritmo | 1d? | 2017-02-13 | 2017-02-13 | 9d |  |
| 364 | 4.3.11.3 | Realizar pruebas | 1d? | 2017-02-13 | 2017-02-13 | 9d |  |
| 365 | 4.3.11.4 | Optimizar código | 1d? | 2017-02-13 | 2017-02-13 | 9d |  |
| 366 | 4.3.12 | [V1]Sistema de depuración visual in-game de la IA | 1d? | 2017-02-13 | 2017-02-13 | 9d |  |
| 367 | 4.3.13 | **[V2]Implementación de clipping** | 1d? | 2017-02-13 | 2017-02-13 | 9d |  |
| 368 | 4.3.13.1 | Estudiar algoritmo | 1d? | 2017-02-13 | 2017-02-13 | 9d |  |
| 369 | 4.3.13.2 | Programar algoritmo | 1d? | 2017-02-13 | 2017-02-13 | 9d |  |
| 370 | 4.3.13.3 | Realizar pruebas | 1d? | 2017-02-13 | 2017-02-13 | 9d |  |
| 371 | 4.3.13.4 | Optimizar código | 1d? | 2017-02-13 | 2017-02-13 | 9d |  |
| 372 | 4.3.14 | **[V2]Diseño y creación de niveles** | 1d? | 2017-02-13 | 2017-02-13 | 9d |  |
| 373 | 4.3.14.1 | Diseñar niveles | 1d? | 2017-02-13 | 2017-02-13 | 9d |  |
| 374 | 4.3.14.2 | Modelar niveles | 1d? | 2017-02-13 | 2017-02-13 | 9d |  |
| 375 | 4.3.14.3 | Implementar niveles | 1d? | 2017-02-13 | 2017-02-13 | 9d |  |
| 376 | 4.3.14.4 | Probar niveles | 1d? | 2017-02-13 | 2017-02-13 | 9d |  |
| 377 | 4.3.14.5 | Mejorar niveles | 1d? | 2017-02-13 | 2017-02-13 | 9d |  |
| 378 | 4.3.15 | [RV]I4. Rigging de los personajes. | 1d? | 2017-02-13 | 2017-02-13 | 9d |  |
| 379 | 4.3.16 | [RV]I4. Captura de movimiento | 1d? | 2017-02-13 | 2017-02-13 | 9d |  |
| 380 | 4.4 | ITERACIÓN 3 | 10d? | 2017-02-27 | 2017-03-12 | 18d | finish no earlier than 2017-03-12 |
| 381 | 4.5 | ITERACIÓN 4 | 10d? | 2017-03-13 | 2017-03-26 | 8d | finish no earlier than 2017-03-26 |
| 382 | 4.6 | ITERACIÓN 5 | 8d? | 2017-03-27 | 2017-04-05 | 0d | finish no earlier than 2017-04-05 |

Notes:
- 350: 456,2
- 351: 9,6
- 352: 9,6
- 353: 9,6
- 354: 7,2
- 355: 7,2
- 356: 10
- 357: 20
- 358: 45
- 359: 25
- 360: 45
- 361: 80
- 366: 60
- 367: 11
- 372: 45
- 378: 12
- 379: 60

| ID | WBS | Task | Duration | Start | Finish | Predecessors | Total slack | Constraint |
| --- | --- | --- | --- | --- | --- | --- | --- | --- |
| 383 | 5 | **HITO 4** | 37d? | 2017-04-06 | 2017-05-26 | 314 | 0d |  |
| 384 | 5.1 | **[PM]Detallar plan iteraciones del mes de Abril-Mayo** | 1d? | 2017-04-06 | 2017-04-06 |  | 36d |  |
| 385 | 5.1.1 | Creación de subtareas y precedencias en Project. | 1d? | 2017-04-06 | 2017-04-06 |  | 36d |  |
| 386 | 5.1.2 | Asignar recursos a las tareas en Project. | 1d? | 2017-04-06 | 2017-04-06 |  | 36d |  |
| 387 | 5.2 | **ITERACIÓN 1** | 10d | 2017-04-06 | 2017-04-19 |  |  |  |
| 388 | 5.2.1 | [PM]Registrar de tiempos y % de realización de tareas en Project. | 1d? | 2017-04-06 | 2017-04-06 |  | 9d |  |
| 389 | 5.2.2 | [TAG]Efectos visuales | 1d? | 2017-04-06 | 2017-04-06 |  | 9d |  |
| 390 | 5.2.3 | [V1]Gestión de recursos de IA con Level-of-Detail | 1d? | 2017-04-06 | 2017-04-06 |  | 9d |  |
| 391 | 5.2.4 | [V2]Implementación de sistemas de partículas | 1d? | 2017-04-06 | 2017-04-06 |  | 9d |  |
| 392 | 5.2.5 | [PD]I4. Making of juego/proyecto | 1d? | 2017-04-06 | 2017-04-06 |  | 9d |  |
| 393 | 5.2.6 | [RV]I8. Modelado del entorno y elementos. | 1d? | 2017-04-06 | 2017-04-06 |  | 9d |  |
| 394 | 5.3 | **ITERACIÓN 2** | 10d | 2017-04-20 | 2017-05-03 |  |  |  |
| 395 | 5.3.1 | [PM]Comparar la planificación prevista y real en Projects Hito 4 | 1d? | 2017-04-20 | 2017-04-20 |  | 9d |  |
| 396 | 5.3.2 | [PM]Confeccionar informes de Iteración e informe resumen de Hito 4 | 1d? | 2017-04-20 | 2017-04-20 |  | 9d |  |
| 397 | 5.3.3 | [PMElaborar la presentación del Hito 4 | 1d? | 2017-04-20 | 2017-04-20 |  | 9d |  |
| 398 | 5.3.4 | [PM]Exponer la presentación del Hito 4 | 1d? | 2017-04-20 | 2017-04-20 |  | 9d |  |
| 399 | 5.3.5 | [TAG]Extras | 1d? | 2017-04-20 | 2017-04-20 |  | 9d |  |
| 400 | 5.3.6 | [V1]Sistema de logros y puntuaciones Web | 1d? | 2017-04-20 | 2017-04-20 |  | 9d |  |
| 401 | 5.3.7 | [PD]I5. Créditos | 1d? | 2017-04-20 | 2017-04-20 |  | 9d |  |
| 402 | 5.3.8 | [RV]I9. Texturizado del entorno y elementos. | 1d? | 2017-04-20 | 2017-04-20 |  | 9d |  |
| 403 | 5.4 | ITERACIÓN 3 | 10d? | 2017-05-04 | 2017-05-17 |  | 7d | finish no earlier than 2017-05-17 |
| 404 | 5.5 | ITERACIÓN 4 | 7d? | 2017-05-18 | 2017-05-26 |  | 0d | finish no earlier than 2017-05-26 |
| 405 | 6 | **Como leer este archivo** | 1d? | 2016-09-12 | 2016-09-12 |  | 184d |  |
| 406 | 6.1 | Las tareas están divididas por hitos e iteraciones. Los hitos e iteraciones tienen las fechas de comienzo y fin correctas | 1d? | 2016-09-12 | 2016-09-12 |  | 184d |  |
| 407 | 6.2 | Las tareas tienen fechas de comienzo y fin orientativas. La información real son las horas de trabajo, que están puestas (de manera aproximada) en la columna Duración1 | 1d? | 2016-09-12 | 2016-09-12 |  | 184d |  |
| 408 | 6.3 | Para obtener información más detallada, leer los informes de iteración y el archivo Excel contabilizador de horas | 1d? | 2016-09-12 | 2016-09-12 |  | 184d |  |
| 409 | 6.4 | Si una tarea está pintada de naranja, quiere decir que no se terminó en la iteración indicada, y se siguió trabajando en iteraciones siguientes. En este caso, las horas indicadas en Duración1 se refieren solo a esa iteración | 1d? | 2016-09-12 | 2016-09-12 |  | 184d |  |
| 410 | 6.5 | Si una tarea está pintada de rojo, quiere decir que no se trabajó nada en esa iteración, y se dejó para futuras iteraciones | 1d? | 2016-09-12 | 2016-09-12 |  | 184d |  |
| 411 | 6.6 | La columna Notas está actualmente en construcción. Ignoradla por el momento | 1d? | 2016-09-12 | 2016-09-12 |  | 184d |  |

Notes:
- 385: 4,8
- 386: 4,8
- 388: 9,6
- 389: 40
- 390: 35
- 391: 15
- 392: 30
- 393: 120
- 395: 9,6
- 396: 9,6
- 397: 7,2
- 398: 7,2
- 399: 170
- 400: 30
- 401: 5
- 402: 90
